# SAD_Phase2

Schedule from MS Project XML, 2018-02-28 to 2018-08-23, costs in $, A marks actual dates.

## Calendars

- Standard: Mon-Fri 08:00-12:00, 13:00-17:00; Sat-Sun off. Exceptions (off unless hours are given): 2018-03-04 08:00-12:00, 13:00-17:00, 2018-03-10 to 2018-03-11 08:00-12:00, 13:00-17:00, 2018-03-24 08:00-12:00, 13:00-17:00.

## Resources

| Resource | Rate |
| --- | --- |
| Iranpak | 10 |
| Karegar | 12 |
| Aalami | 15 |

## Schedule

| ID | WBS | Task | Type | Duration | Start | Finish | Predecessors | Complete | Remaining | Actual start | Total slack | Free slack | Constraint | Resources | Work | Actual work | Cost | Actual cost |
| --- | --- | --- | --- | --- | --- | --- | --- | --- | --- | --- | --- | --- | --- | --- | --- | --- | --- | --- |
| 1 | 1 | **فاز اول** |  | 2d | 2018-02-28 | 2018-03-04 A |  | 100% |  | 2018-03-02 |  |  |  |  | 16h | 16h | 193.4 | 193.4 |
| 2 | 1.1 | **تهیه پروپوزال** |  | 1.25d | 2018-03-02 A | 2018-03-04 A |  | 100% |  |  |  |  |  |  | 13.5h | 13.5h | 161.2 | 161.2 |
| 3 | 1.1.1 | اهداف و توجیه |  | 1.43h | 2018-03-02 A | 2018-03-02 A |  | 100% |  |  |  |  |  | Iranpak [70%]; Karegar [60%] | 1.6h | 1.6h | 17.2 | 17.2 |
| 4 | 1.1.2 | معرفی و مفاد قرارداد |  | 1h | 2018-03-02 A | 2018-03-02 A |  | 100% |  |  |  |  |  | Karegar | 1h | 1h | 12 | 12 |
| 5 | 1.1.3 | **معرفی سیستم و توضیح تکنولوژی** |  | 3h | 2018-03-02 A | 2018-03-02 A |  | 100% |  |  |  |  |  |  | 3.2h | 3.2h | 43 | 43 |
| 6 | 1.1.3.1 | تهیه گزینه راه حل‌های تکنولوژی |  | 1h | 2018-03-02 A | 2018-03-02 A |  | 100% |  |  |  |  |  | Aalami; Iranpak | 2h | 2h | 25 | 25 |
| 7 | 1.1.3.2 | امکان سنجی گزینه ها |  | 1h | 2018-03-02 A | 2018-03-02 A | 6 | 100% |  |  |  |  |  | Aalami [60%] | 0.6h | 0.6h | 9 | 9 |
| 8 | 1.1.3.3 | انتخاب گزینه راه حل نهایی |  | 1h | 2018-03-02 A | 2018-03-02 A | 7 | 100% |  |  |  |  |  | Aalami [60%] | 0.6h | 0.6h | 9 | 9 |
| 9 | 1.1.4 | **پوشش نیازمندی‌های کارکردی و غیرکارکردی** |  | 1h | 2018-03-03 | 2018-03-04 A |  | 100% |  | 2018-03-04 |  |  |  |  | 2.6h | 2.6h | 28.4 | 28.4 |
| 10 | 1.1.4.1 | نیازمندی‌های کارکردی |  | 1h | 2018-03-04 A | 2018-03-04 A |  | 100% |  |  |  |  |  | Iranpak [70%]; Karegar [60%] | 1.3h | 1.3h | 14.2 | 14.2 |
| 11 | 1.1.4.2 | نیازمندی‌های غیرکارکردی |  | 1h | 2018-03-04 A | 2018-03-04 A |  | 100% |  |  |  |  |  | Iranpak [70%]; Karegar [60%] | 1.3h | 1.3h | 14.2 | 14.2 |
| 12 | 1.1.5 | برآورد زمانی |  | 1h | 2018-03-02 A | 2018-03-02 A |  | 100% |  |  |  |  |  | Iranpak [70%]; Karegar [60%] | 1.3h | 1.3h | 14.2 | 14.2 |
| 13 | 1.1.6 | برآوردمالی |  | 1h | 2018-03-02 A | 2018-03-02 A | 12 | 100% |  |  |  |  |  | Iranpak [70%]; Karegar [60%] | 1.3h | 1.3h | 14.2 | 14.2 |
| 14 | 1.1.7 | مراحل اجرای پروژه |  | 1h | 2018-03-02 A | 2018-03-02 A |  | 100% |  |  |  |  |  | Aalami [60%] | 0.6h | 0.6h | 9 | 9 |
| 15 | 1.1.8 | معرفی اعضای گروه |  | 1h | 2018-03-02 A | 2018-03-02 A |  | 100% |  |  |  |  |  | Aalami [60%] | 0.6h | 0.6h | 9 | 9 |
| 16 | 1.1.9 | بیان نمرات اضافی |  | 1h | 2018-03-02 A | 2018-03-02 A |  | 100% |  |  |  |  |  | Iranpak [70%]; Karegar [60%] | 1.3h | 1.3h | 14.2 | 14.2 |
| 17 | 1.2 | بازخوانی و تصحیح پروپوزال و آماده سازی نسخه نهایی |  | 1h | 2018-03-04 A | 2018-03-04 A | 2 | 100% |  |  |  |  |  | Aalami [60%]; Iranpak [70%]; Karegar [60%] | 1.9h | 1.9h | 23.2 | 23.2 |
| 18 | 1.3 | ارسال نسخه نهایی |  | 1h | 2018-03-04 A | 2018-03-04 A | 17 | 100% |  |  |  |  | start no earlier than 2018-03-04 | Aalami [60%] | 0.6h | 0.6h | 9 | 9 |
| 19 | 2 | **فاز دوم** |  | 11d | 2018-03-05 A | 2018-03-15 A | 1 | 100% |  |  |  |  |  |  | 62.4h | 62.4h | 681.6 | 681.6 |
| 20 | 2.1 | تعیین ددلاین های سطح 2 |  | 1d | 2018-03-05 A | 2018-03-05 A |  | 100% |  |  |  |  | start no earlier than 2018-03-05 | Iranpak [70%]; Karegar [60%] | 10.4h | 10.4h | 113.6 | 113.6 |
| 21 | 2.2 | تعیین تسک های هر فاز |  | 4d | 2018-03-11 A | 2018-03-14 A | 20 | 100% |  |  |  |  | finish no earlier than 2018-03-14 | Iranpak [70%]; Karegar [60%] | 41.6h | 41.6h | 454.4 | 454.4 |
| 22 | 2.3 | اختصاص زمان و منابع به هر تسک |  | 1d | 2018-03-15 A | 2018-03-15 A | 21 | 100% |  |  |  |  |  | Iranpak [70%]; Karegar [60%] | 10.4h | 10.4h | 113.6 | 113.6 |
| 23 | 3 | **فاز سوم** |  | 33d? | 2018-03-16 A | 2018-04-30 | 19 | 13% | 28.88d? |  |  |  |  |  | 122.4h | 20h | 1,579.2 | 250.4 |
| 24 | 3.1 | **نوشتن موردهای کاربردی** |  | 6d? | 2018-03-16 | 2018-04-22 |  | 25% | 21d? | 2018-04-13 |  |  |  |  | 68.8h | 20h | 889.6 | 250.4 |
| 25 | 3.1.1 | مطالعه و آشنایی با موردهای کاربردی |  | 1d? | 2018-04-13 A | 2018-04-15 A |  | 100% |  |  |  |  | finish no earlier than 2018-04-15 | Aalami [60%]; Iranpak [70%]; Karegar [60%] | 15.2h | 15.2h | 185.6 | 185.6 |
| 26 | 3.1.2 | مشاهده نمونه هایی از موارد کاربردی طراحی شده |  | 2d | 2018-04-15 A | 2018-04-17 |  | 25% | 1.5d |  | 4d | 0d | start no earlier than 2018-04-15 | Aalami [60%]; Karegar [60%] | 19.2h | 4.8h | 259.2 | 64.8 |
| 27 | 3.1.3 | یادگیری ابزار طراحی موردهای کاربردی |  | 1d | 2018-04-18 | 2018-04-18 | 26 |  |  |  | 4d | 0d | finish no earlier than 2018-04-18 | Iranpak [70%]; Karegar [60%]; Aalami [60%] | 15.2h |  | 185.6 |  |
| 28 | 3.1.4 | طراحی نمودار موارد کاربردی |  | 2d | 2018-04-19 | 2018-04-20 | 27 |  |  |  | 5d | 0d | finish no earlier than 2018-04-20 | Aalami [60%]; Karegar [60%] | 19.2h |  | 259.2 |  |
| 29 | 3.1.5 | طراحی و تکمیل جداول موردهای کاربردی مربوطه | milestone, manual | 0d | 2018-04-21 | 2018-04-21 | 28 |  |  |  |  |  |  | Iranpak [70%]; Karegar [60%]; Aalami [60%] |  |  |  |  |
| 30 | 3.1.6 | جمع بندی نهایی | milestone | 0d | 2018-04-22 | 2018-04-22 | 29 |  |  |  | 89d |  | finish no earlier than 2018-04-22 | Aalami [60%]; Iranpak [70%]; Karegar [60%] |  |  |  |  |

| ID | WBS | Task | Type | Duration | Start | Finish | Predecessors | Total slack | Free slack | Constraint | Resources | Work | Cost |
| --- | --- | --- | --- | --- | --- | --- | --- | --- | --- | --- | --- | --- | --- |
| 31 | 3.2 | **طراحی سناریوی تست** |  | 6d | 2018-04-23 | 2018-04-30 | 24 |  |  |  |  | 53.6h | 689.6 |
| 32 | 3.2.1 | مشخص کردن توابع اصلی نیازمند به تست |  | 3d | 2018-04-23 | 2018-04-25 |  | 84d | 0d | finish no earlier than 2018-04-25 | Aalami [60%]; Karegar [60%] | 28.8h | 388.8 |
| 33 | 3.2.2 | توصیف خروجی مورد انتظار برای هر تابع |  | 2d | 2018-04-26 | 2018-04-27 | 32 | 84d | 0d | finish no earlier than 2018-04-27 | Karegar [60%] | 9.6h | 115.2 |
| 34 | 3.2.3 | **طراحی شمای کلی هر تست** |  | 0d | 2018-04-28 | 2018-04-29 | 33 |  |  |  |  |  |  |
| 35 | 3.2.3.1 | مشخص کردن جزئیات هر یک از تست ها | milestone | 0d | 2018-04-28 | 2018-04-28 |  | 84d | 0d | start no earlier than 2018-04-28 | Iranpak [70%] |  |  |
| 36 | 3.2.3.2 | انتخاب ابزار مورد نیاز برای تست هر تابع | milestone | 0d | 2018-04-29 | 2018-04-29 | 35 | 84d |  | start no earlier than 2018-04-29 | Iranpak [70%]; Karegar [60%] |  |  |
| 37 | 3.2.4 | پیاده سازی اولیه هر یک از تست ها |  | 1d | 2018-04-30 | 2018-04-30 | 34 | 83d |  | finish no earlier than 2018-04-30 | Aalami [60%]; Iranpak [70%]; Karegar [60%] | 15.2h | 185.6 |
| 38 | 4 | **فاز چهارم** |  | 32d? | 2018-05-01 | 2018-06-13 | 23 |  |  |  |  | 241.6h | 2,737.6 |
| 39 | 4.1 | **تکمیل موردهای کاربردی** |  | 22d | 2018-05-01 | 2018-05-30 |  |  |  |  |  | 139.2h | 1,526.4 |
| 40 | 4.1.1 | بررسی دقیق و اضافه یا حذف کردن موردهای کاربردی |  | 18d | 2018-05-01 | 2018-05-24 |  | 61d | 0d | start no earlier than 2018-05-01 | Iranpak [70%] | 100.8h | 1,008 |
| 41 | 4.1.2 | ویرایش موردهای کاربردی تایید شده |  | 4d | 2018-05-25 | 2018-05-30 | 40 | 61d |  | finish no earlier than 2018-05-30 | Aalami [60%]; Karegar [60%] | 38.4h | 518.4 |
| 42 | 4.2 | **تکمیل سناریوی تست** |  | 10d | 2018-05-31 | 2018-06-13 |  |  |  |  |  | 102.4h | 1,211.2 |
| 43 | 4.2.1 | بررسی دقیق و اضافه یا حذف کردن توابع اصلی نیازمند به تست |  | 2d | 2018-05-31 | 2018-06-02 |  | 56d | 0d | finish no earlier than 2018-06-02 | Karegar [60%] | 9.6h | 115.2 |
| 44 | 4.2.2 | انجام تغییرات (درصورت لزوم) در تست های پیاده سازی شده |  | 3d | 2018-06-04 | 2018-06-06 | 43 | 56d |  | finish no earlier than 2018-06-06 | Iranpak [70%] | 16.8h | 168 |
| 45 | 4.2.3 | پیاده سازی تست های جدید |  | 3d | 2018-06-07 | 2018-06-11 |  | 53d |  | finish no earlier than 2018-06-11 | Aalami [60%]; Iranpak [70%]; Karegar [60%] | 45.6h | 556.8 |
| 46 | 4.2.4 | نهایی سازی تست های طراحی شده |  | 2d | 2018-06-12 | 2018-06-13 |  | 51d |  | finish no earlier than 2018-06-13 | Aalami [60%]; Iranpak [70%]; Karegar [60%] | 30.4h | 371.2 |
| 47 | 5 | **فاز پنجم** |  | 51d? | 2018-06-14 | 2018-08-23 | 38 |  |  |  |  | 531.2h | 6,665.6 |
| 48 | 5.1 | **طراحی کلی معماری پایگاه داده** |  | 20d | 2018-06-14 | 2018-07-11 |  |  |  |  |  | 195.2h | 2,585.6 |
| 49 | 5.1.1 | طراحی نمودار ER برای موجودیت های سامانه |  | 16d | 2018-06-14 | 2018-07-05 |  | 31d | 0d | finish no earlier than 2018-07-05 | Aalami [60%]; Karegar [60%] | 153.6h | 2,073.6 |
| 50 | 5.1.2 | طراحی شمای پایگاه داده |  | 4d | 2018-07-06 | 2018-07-11 | 49 | 31d |  | start no earlier than 2018-07-06 | Aalami [60%]; Iranpak [70%] | 41.6h | 512 |
| 51 | 5.2 | **طراحی و پیاده سازی موارد مربوط به بک اند** |  | 18d? | 2018-07-12 | 2018-08-06 | 48 |  |  |  |  | 168h | 2,040 |
| 52 | 5.2.1 | **پیاده سازی پایگاه داده** |  | 4d | 2018-07-12 | 2018-07-21 |  |  |  |  |  | 30.4h | 371.2 |
| 53 | 5.2.1.1 | یادگیری کار با MySQL به عنوان ابزار مورد استفاده |  | 1d | 2018-07-17 | 2018-07-17 |  | 26d | 2d | finish no earlier than 2018-07-17 | Aalami [60%]; Iranpak [70%]; Karegar [60%] | 15.2h | 185.6 |
| 54 | 5.2.1.2 | پیاده سازی عملی پایگاه داده |  | 1d | 2018-07-20 | 2018-07-21 | 53 | 24d |  | finish no earlier than 2018-07-21 | Aalami [60%]; Iranpak [70%]; Karegar [60%] | 15.2h | 185.6 |

| ID | WBS | Task | Duration | Start | Finish | Predecessors | Total slack | Free slack | Constraint | Resources | Work | Cost |
| --- | --- | --- | --- | --- | --- | --- | --- | --- | --- | --- | --- | --- |
| 55 | 5.2.2 | **تحلیل و طراحی معماری بک اند** | 3d | 2018-07-22 | 2018-07-25 | 52 |  |  |  |  | 16h | 184 |
| 56 | 5.2.2.1 | بررسی چند پروژه پیاده سازی شده با Django | 1d | 2018-07-23 | 2018-07-23 |  | 21d | 0d | start no earlier than 2018-07-22 | Aalami [60%] | 4.8h | 72 |
| 57 | 5.2.2.2 | طراحی معماری بک اند | 2d | 2018-07-24 | 2018-07-25 | 56 | 21d |  | finish no earlier than 2018-07-25 | Iranpak [70%] | 11.2h | 112 |
| 58 | 5.2.3 | **پیاده سازی بک اند** | 8d | 2018-07-26 | 2018-08-06 | 55 |  |  |  |  | 121.6h | 1,484.8 |
| 59 | 5.2.3.1 | یادگیری Django و تکنولوژی های مرتبط | 4d | 2018-07-26 | 2018-07-31 |  | 13d | 0d | finish no earlier than 2018-07-31 | Aalami [60%]; Iranpak [70%]; Karegar [60%] | 60.8h | 742.4 |
| 60 | 5.2.3.2 | پیاده سازی کد | 4d | 2018-08-01 | 2018-08-06 | 59 | 13d |  | finish no earlier than 2018-08-06 | Aalami [60%]; Iranpak [70%]; Karegar [60%] | 60.8h | 742.4 |
| 61 | 5.3 | **پیاده سازی فرانت اند** | 10d | 2018-08-07 | 2018-08-20 | 51 |  |  |  |  | 132.8h | 1,596.8 |
| 62 | 5.3.1 | طراحی واسط کاربری | 2d | 2018-08-07 | 2018-08-08 |  | 3d | 0d | start no earlier than 2018-08-07 | Iranpak [70%] | 11.2h | 112 |
| 63 | 5.3.2 | یادگیری ابزارهای مربوط به پیاده سازی فرانت اند | 4d | 2018-08-09 | 2018-08-14 | 62 | 3d | 0d | finish no earlier than 2018-08-14 | Aalami [60%]; Iranpak [70%]; Karegar [60%] | 60.8h | 742.4 |
| 64 | 5.3.3 | پیاده سازی واسط کاربری | 4d | 2018-08-15 | 2018-08-20 | 63 | 3d |  | start no earlier than 2018-08-15 | Aalami [60%]; Iranpak [70%]; Karegar [60%] | 60.8h | 742.4 |
| 65 | 5.4 | **تست و دیباگ نهایی** | 3d | 2018-08-21 | 2018-08-23 | 61 |  |  |  |  | 35.2h | 443.2 |
| 66 | 5.4.1 | اجرای نهایی تست های طراحی شده برای کل سیستم | 1d | 2018-08-21 | 2018-08-21 |  | 0d |  |  | Aalami [60%] | 4.8h | 72 |
| 67 | 5.4.2 | اصلاح نهایی سیستم و رسیدن به نسخه نهایی | 2d | 2018-08-22 | 2018-08-23 | 66 | 0d |  | start no earlier than 2018-08-22 | Aalami [60%]; Iranpak [70%]; Karegar [60%] | 30.4h | 371.2 |
